# 1150080141_LAB51(B2)

Schedule from MS Project, 2022-11-01 to 2022-12-06, status date 2022-11-07, costs in $, A marks actual dates.

## Calendars

- Standard: Mon-Fri 08:00-12:00, 13:00-17:00; Sat-Sun off. Exceptions (off unless hours are given): 2022-11-14 (Ngày hội toàn công ty).

## Resources

| Resource | Group | Rate |
| --- | --- | --- |
| Ngô Trọng Phúc | Lập Trình Viên | 30 |
| Nguyễn Chí Cường | Lập Trình Viên | 35 |
| Phạm Hồng Hạnh | Lập Trình Viên | 30 |
| Lâm Thị Kim Yến | Kiểm Thử Viên | 25 |
| Phan Thành Đạt | Kiểm Thử Viên | 30 |
| Trần Hoàng Hà | Kiểm Thử Viên | 25 |
| Huỳnh Mai Lê | Kiểm Thử Viên | 20 |
| Mai Lệ Quyên | Khách | 30 |

## Schedule

| ID | WBS | Task | Type | Duration | Start | Finish | Predecessors | Complete | Remaining | Baseline start | Baseline finish | Baseline duration | Total slack | Resources | Work | Actual work | Cost | Baseline cost | Actual cost |
| --- | --- | --- | --- | --- | --- | --- | --- | --- | --- | --- | --- | --- | --- | --- | --- | --- | --- | --- | --- |
| 1 | 1 | **1150080141_DX_MY** |  | 25d | 2022-11-01 A | 2022-12-06 |  | 17% | 20.83d | 2022-11-01 | 2022-12-02 | 23d | 0d |  | 660h | 96h | 17,920 | 17,920 | 3,080 |
| 2 | 1.1 | **Kiểm thử đơn vị** |  | 17.5d | 2022-11-01 A | 2022-11-25 |  | 26% | 13.01d | 2022-11-01 | 2022-11-23 | 15.5d | 0d |  | 496h | 96h | 13,680 | 13,680 | 3,080 |
| 3 | 1.1.1 | Kiểm thử đơn vị |  | 10d | 2022-11-01 A | 2022-11-15 |  | 50% | 5d | 2022-11-01 | 2022-11-10 | 8d | 0d | Ngô Trọng Phúc; Nguyễn Chí Cường; Phạm Hồng Hạnh | 192h | 96h | 6,080 | 6,080 | 3,080 |
| 4 | 1.1.2 | Kiểm thử tích hợp |  | 9.5d | 2022-11-11 | 2022-11-25 | 3FS-2d |  |  | 2022-11-09 | 2022-11-23 | 9.5d | 0d | Huỳnh Mai Lê; Lâm Thị Kim Yến; Phan Thành Đạt; Trần Hoàng Hà | 304h |  | 7,600 | 7,600 |  |
| 5 | 1.2 | **Kiểm thử hệ thống** |  | 7.5d | 2022-11-25 | 2022-12-06 |  |  |  | 2022-11-23 | 2022-12-02 | 7.5d | 0d |  | 164h |  | 4,240 | 4,240 |  |
| 6 | 1.2.1 | Kiểm thử chức năng |  | 5d | 2022-11-25 | 2022-12-02 | 4 |  |  | 2022-11-23 | 2022-11-30 | 5d | 0d | Huỳnh Mai Lê; Phan Thành Đạt | 80h |  | 2,000 | 2,000 |  |
| 7 | 1.2.2 | Kiểm thử hiệu suất |  | 3d | 2022-11-25 | 2022-11-30 | 4 |  |  | 2022-11-23 | 2022-11-28 | 3d | 2d | Lâm Thị Kim Yến; Trần Hoàng Hà | 48h |  | 1,200 | 1,200 |  |
| 8 | 1.2.3 | Kiểm thử chấp nhận |  | 1.5d | 2022-12-02 | 2022-12-05 | 6, 7 |  |  | 2022-11-30 | 2022-12-01 | 1.5d | 0d | Mai Lệ Quyên | 12h |  | 360 | 360 |  |
| 9 | 1.2.4 | Kiểm thử cài đặt |  | 1d | 2022-12-06 | 2022-12-06 | 8 |  |  | 2022-12-02 | 2022-12-02 | 1d | 0d | Lâm Thị Kim Yến; Mai Lệ Quyên; Phan Thành Đạt | 24h |  | 680 | 680 |  |
| 10 | 1.3 | Hệ thống sẵn sàng cho sử dụng | milestone | 0d | 2022-12-06 | 2022-12-06 | 9 |  |  | 2022-12-02 | 2022-12-02 | 0d | 0d |  |  |  |  |  |  |
