# Lịch trình ra mắt sách mới

Schedule from MS Project, 2015-01-05 to 2015-02-26, status date 2015-01-14, costs in $, A marks actual dates.
New book launch schedule
Lucerne Publishing
New children's book for spring release

## Calendars

- Standard: Mon-Fri 08:00-12:00, 13:00-17:00; Sat-Sun off. Exceptions (off unless hours are given): 2015-01-22 (Staff at morale event).

## Resources

| Resource | Unit | Rate | Notes |
| --- | --- | --- | --- |
| Jun Cao |  | 42 |  |
| Sharon Salavaria |  | 27.5 | Sharons standard pay rate is adjusted for her half-time work schedule. |
| Toby Nixon |  | 67.5 | Toby worked on launch campaigns for Toni Poes previous two books. |
| Toni Poe |  |  |  |
| Zac Woodall |  | 55 |  |
| Copyeditors |  | 45 |  |
| Travel |  |  |  |
| Carole Poland |  | 52.5 |  |
| Dan Jump |  | 75.5 |  |
| Hany Morcos |  | 38.75 |  |
| Jane Dow |  | 55 |  |
| John Evans |  | 69.5 |  |
| Katie Jordan |  | 48 |  |
| Luis Sousa |  | 70 |  |
| Printing Service |  |  |  |
| Robin Wood |  | 44 |  |
| Vikas Jain |  | 22 |  |
| William Flash |  |  |  |
| Nguyễn Thị Lan |  |  |  |
| Trần Văn Hùng |  |  |  |
| Cao Minh Tuấn |  |  |  |
| Phạm Anh Dũng |  |  |  |
| Lê Quốc Khánh |  |  |  |
| Hoàng Thị Thu Hà |  |  |  |
| Đào Thị Mai |  |  |  |
| Vũ Minh Hoàng |  |  |  |
| Trịnh Văn Quang |  |  |  |
| Chi phí đi lại | USD |  |  |

## Schedule

| ID | WBS | Task | Type | Duration | Start | Finish | Predecessors | Complete | Remaining | Baseline start | Baseline finish | Baseline duration | Total slack | Free slack | Resources | Work | Actual work | Cost | Baseline cost |
| --- | --- | --- | --- | --- | --- | --- | --- | --- | --- | --- | --- | --- | --- | --- | --- | --- | --- | --- | --- |
| 1 | 1 | **Giai đoạn Lập kế hoạch** |  | 11d | 2015-01-05 A | 2015-01-19 A |  | 100% |  | 2015-01-05 | 2015-01-19 | 11d |  |  |  | 248h | 248h |  | 11,900 |
| 2 | 1.1 | Phân công thành viên trong nhóm ra mắt |  | 1d | 2015-01-05 A | 2015-01-05 A |  | 100% |  | 2015-01-05 | 2015-01-05 | 1d |  |  | Nguyễn Thị Lan | 8h | 8h |  | 420 |
| 3 | 1.2 | Hoàn thành bảng câu hỏi dành cho tác giả |  | 1w | 2015-01-06 A | 2015-01-12 A | 2 | 100% |  | 2015-01-06 | 2015-01-12 | 1w |  |  | Trần Văn Hùng | 40h | 40h |  |  |
| 4 | 1.3 | Lên lịch phỏng vấn tác giả |  | 1w | 2015-01-05 A | 2015-01-12 A | 2 | 100% |  | 2015-01-05 | 2015-01-12 | 1w |  |  | Cao Minh Tuấn | 40h | 40h |  | 1,680 |
| 5 | 1.4 | Thiết kế và đặt in ấn tài liệu marketing |  | 2w | 2015-01-06 A | 2015-01-19 A | 2 | 100% |  | 2015-01-06 | 2015-01-19 | 2w |  |  | Phạm Anh Dũng; Lê Quốc Khánh | 160h | 160h |  | 9,800 |
| 6 | 1.5 | Hoàn tất giai đoạn lập kế hoạch! | milestone | 0d | 2015-01-19 A | 2015-01-19 A | 5 | 100% |  | 2015-01-19 | 2015-01-19 | 0d |  |  |  |  |  |  |  |
| 7 | 2 | **Giai đoạn Ra mắt nội bộ** |  | 15d | 2015-01-20 A | 2015-02-10 | 1 | 62% | 5.77d | 2015-01-20 | 2015-02-06 | 13d | 0d |  | Hoàng Thị Thu Hà [50%]; Phạm Anh Dũng | 500h | 298.5h |  | 13,942 |
| 8 | 2.1 | Họp khởi động chiến dịch ra mắt sách |  | 1d | 2015-01-20 A | 2015-01-20 A |  | 100% |  | 2015-01-20 | 2015-01-20 | 1d |  |  | Nguyễn Thị Lan | 8h | 8h |  | 650 |
| 9 | 2.2 | Chuẩn bị báo cáo P&L (lãi lỗ) của sách |  | 2d | 2015-01-21 A | 2015-01-23 | 8 | 50% | 1d | 2015-01-21 | 2015-01-23 | 2d | 12d |  | Đào Thị Mai | 16h | 8h |  | 840 |
| 10 | 2.3 | Lập kế hoạch hành trình di chuyển cho tác giả |  | 7d | 2015-01-20 A | 2015-01-29 A | 8 | 100% |  | 2015-01-21 | 2015-01-29 | 6d |  |  | Lê Quốc Khánh; Vũ Minh Hoàng | 112h | 112h |  | 2,640 |
| 11 | 2.4 | Chuẩn bị kênh bán hàng |  | 7d | 2015-01-21 A | 2015-01-30 A | 8 | 100% |  | 2015-01-21 | 2015-01-28 | 1w |  |  | Phạm Anh Dũng; Trịnh Văn Quang | 112h | 112h |  | 3,750 |
| 12 | 2.5 | Hoàn thành biểu mẫu ra mắt sách |  | 2d | 2015-02-02 | 2015-02-03 | 11 |  |  | 2015-01-29 | 2015-01-30 | 2d | 5d |  | Vũ Minh Hoàng; Lê Quốc Khánh | 32h |  |  | 1,432 |
| 13 | 2.6 | Chuẩn bị bộ công cụ bán hàng cho sách |  | 1w | 2015-02-02 | 2015-02-06 | 8, 11 |  |  | 2015-01-29 | 2015-02-04 | 1w | 0d |  | Lê Quốc Khánh | 40h |  |  | 3,750 |
| 14 | 2.7 | Phát hành tài liệu marketing nội bộ |  | 2d | 2015-02-09 | 2015-02-10 | 13 |  |  | 2015-02-05 | 2015-02-06 | 2d | 0d |  |  |  |  |  | 880 |
| 15 | 3 | **Giai đoạn Ra mắt công chúng** |  | 12d | 2015-02-11 | 2015-02-26 | 7 |  |  | 2015-02-09 | 2015-02-24 | 12d | 0d |  | Trần Văn Hùng | 456h |  | 7,160 | 13,352 |
| 16 | 3.1 | **Hành trình và sự kiện xuất hiện của tác giả** |  | 2d | 2015-02-11 | 2015-02-12 |  |  |  | 2015-02-09 | 2015-02-10 | 2d | 10d |  | Trần Văn Hùng; Chi phí đi lại [800 USD] | 40h |  |  | 800 |
| 17 | 3.1.1 | Phỏng vấn phát thanh với tác giả |  | 1d | 2015-02-11 | 2015-02-11 |  |  |  | 2015-02-09 | 2015-02-09 | 1d | 10d | 0d | Phạm Anh Dũng; Trịnh Văn Quang | 16h |  |  |  |
| 18 | 3.1.2 | Buổi đọc sách và ký tặng tại hội chợ sách |  | 1d | 2015-02-12 | 2015-02-12 | 17 |  |  | 2015-02-10 | 2015-02-10 | 1d | 10d |  | Lê Quốc Khánh | 8h |  |  | 800 |
| 19 | 3.2 | Phát hành bản in thử |  | 2d | 2015-02-11 | 2015-02-12 |  |  |  | 2015-02-09 | 2015-02-10 | 2d | 10d |  | Lê Quốc Khánh | 16h |  |  | 1,432 |
| 20 | 3.3 | Phát hành bộ công cụ bán hàng |  | 2d | 2015-02-11 | 2015-02-12 |  |  |  | 2015-02-09 | 2015-02-10 | 2d | 0d |  | Phạm Anh Dũng; Trịnh Văn Quang | 32h |  |  | 880 |
| 21 | 3.4 | Phối hợp thực hiện các bài viết trên tạp chí |  | 7d | 2015-02-13 | 2015-02-23 | 20 |  |  | 2015-02-11 | 2015-02-19 | 7d | 3d |  | Phạm Anh Dũng; Trịnh Văn Quang | 112h |  |  | 3,080 |
| 22 | 3.5 | Khởi chạy cổng thông tin web công khai cho sách |  | 1w | 2015-02-13 | 2015-02-19 | 20 |  |  | 2015-02-11 | 2015-02-17 | 1w | 0d |  | Toby Nixon; Vikas Jain | 80h |  | 3,580 | 3,580 |
| 23 | 3.6 | Khởi chạy các chương trình truyền thông xã hội cho sách |  | 1w | 2015-02-20 | 2015-02-26 | 22 |  |  | 2015-02-18 | 2015-02-24 | 1w | 0d |  | Toby Nixon; Vikas Jain | 80h |  | 3,580 | 3,580 |
| 24 | 3.7 | Hoàn tất giai đoạn ra mắt công chúng! | milestone | 0d | 2015-02-26 | 2015-02-26 | 21, 22, 23 |  |  | 2015-02-24 | 2015-02-24 | 0d | 0d |  |  |  |  |  |  |

Notes:
- 19: Get recipient list from publicist
